# Revamp room booking system

Schedule from MS Project, 2022-10-10 to 2022-11-16, status date 2022-10-18, costs in $, A marks actual dates.

## Calendars

- Standard: Mon-Fri 08:00-12:00, 13:00-17:00; Sat-Sun 10:00-12:00, 13:00-15:00. Exceptions (off unless hours are given): 2022-10-16 08:00-12:00, 13:00-17:00, 2022-10-24 (Deepavali).

## Resources

| Resource | Rate |
| --- | --- |
| Theophilus | 25 |
| Bin Hui | 25 |
| Dominic | 25 |
| Tsun Hong | 25 |
| Debra | 25 |
| Jasmine | 25 |
| Office Rental | 6000 |
| sc |  |

## Schedule

| ID | WBS | Task | Type | Duration | Start | Finish | Predecessors | Complete | Actual finish | Baseline start | Baseline finish | Baseline duration | Constraint | Deadline | Resources | Work | Actual work | Cost | Baseline cost | Actual cost |
| --- | --- | --- | --- | --- | --- | --- | --- | --- | --- | --- | --- | --- | --- | --- | --- | --- | --- | --- | --- | --- |
| 1 | 1 | **Planning Stage** |  | 2d | 2022-10-10 08:00 A | 2022-10-11 17:00 A |  | 100% |  | 2022-10-10 08:00 | 2022-10-11 17:00 | 2d? |  | 2022-10-13 17:00 |  | 44.8h | 44.8h | 7,120 | 1,200 | 7,120 |
| 2 | 1.1 | Pay office rental |  | 1d | 2022-10-10 08:00 A | 2022-10-10 17:00 A |  | 100% |  | 2022-10-10 08:00 | 2022-10-10 17:00 | 1d? |  |  | Office Rental |  |  | 6,000 |  | 6,000 |
| 3 | 1.2 | Meeting 1 |  | 1d | 2022-10-10 08:00 A | 2022-10-10 17:00 A | 2SS | 100% |  |  |  |  |  |  | Bin Hui [20%]; Dominic [20%]; Theophilus [20%]; Tsun Hong [20%]; Debra [20%]; Jasmine [20%] | 9.6h | 9.6h | 240 |  | 240 |
| 4 | 1.3 | Fill up Kick Off Meeting Agenda |  | 1d | 2022-10-10 08:00 A | 2022-10-10 17:00 A | 3SS | 100% |  |  |  |  |  |  | Dominic [20%] | 1.6h | 1.6h | 40 |  | 40 |
| 5 | 1.4 | Prepare Project charter |  | 1d | 2022-10-10 08:00 A | 2022-10-10 17:00 A | 3SS | 100% |  | 2022-10-10 08:00 | 2022-10-10 17:00 | 1d | finish no earlier than 2022-10-10 17:00 |  | Bin Hui [20%]; Debra [20%]; Dominic [20%]; Jasmine [20%]; Theophilus [20%]; Tsun Hong [20%] | 9.6h | 9.6h | 240 | 200 | 240 |
| 6 | 1.5 | Prepare Cost Estimate |  | 1d | 2022-10-10 08:00 A | 2022-10-10 17:00 A | 5SS | 100% |  |  |  |  |  |  | Dominic [20%]; Tsun Hong [20%] | 3.2h | 3.2h | 80 |  | 80 |
| 7 | 1.6 | Prepare Scope Statement |  | 1d | 2022-10-10 08:00 A | 2022-10-10 17:00 A | 5SS | 100% |  |  |  |  |  |  | Debra [20%] | 1.6h | 1.6h | 40 |  | 40 |
| 8 | 1.7 | Prepare HR plan |  | 1d | 2022-10-10 08:00 A | 2022-10-10 17:00 A | 5SS | 100% |  |  |  |  |  |  | Bin Hui [20%]; Debra [20%] | 3.2h | 3.2h | 80 |  | 80 |
| 9 | 1.8 | Prepare Organisational Chart |  | 1d | 2022-10-10 08:00 A | 2022-10-10 17:00 A | 5SS | 100% |  | 2022-10-10 08:00 | 2022-10-10 17:00 | 1d | start no earlier than 2022-10-10 08:00 |  | Theophilus [20%]; Tsun Hong [20%] | 3.2h | 3.2h | 80 | 200 | 80 |
| 10 | 1.9 | Prepare Team Contract |  | 1d | 2022-10-10 08:00 A | 2022-10-10 17:00 A | 5SS | 100% |  | 2022-10-10 08:00 | 2022-10-10 17:00 | 1d |  |  | Theophilus [10%]; Bin Hui [10%]; Tsun Hong [10%]; Debra [10%]; Dominic [10%]; Jasmine [10%] | 4.8h | 4.8h | 120 | 600 | 120 |
| 11 | 1.10 | Send Project Charter to CIO |  | 1d | 2022-10-11 08:00 A | 2022-10-11 17:00 A | 5, 9, 10 | 100% |  |  |  |  | finish no earlier than 2022-10-11 17:00 |  | Theophilus | 8h | 8h | 200 |  | 200 |
| 12 | 1.11 | Planning Completed | milestone | 0d | 2022-10-11 17:00 A | 2022-10-11 17:00 A | 11FS-1d | 100% |  |  |  |  | finish no earlier than 2022-10-11 17:00 | 2022-10-13 17:00 | Bin Hui; Debra; Dominic; Jasmine; Theophilus; Tsun Hong |  |  |  |  |  |
| 13 | 2 | **Analysis Stage** |  | 5.5d | 2022-10-13 08:00 A | 2022-10-18 17:00 |  | 100% | 2022-10-17 17:00 | 2022-10-12 08:00 | 2022-10-17 17:00 | 4d |  | 2022-10-20 17:00 |  | 92h | 92h | 2,300 | 14,200 | 2,300 |
| 14 | 2.1 | Approach and Interview CIO |  | 1d | 2022-10-13 08:00 A | 2022-10-13 17:00 A |  | 100% |  | 2022-10-13 08:00 | 2022-10-13 17:00 | 1d |  |  | Dominic [50%]; Theophilus; Bin Hui; Debra; Jasmine; Tsun Hong | 24h | 24h | 600 | 1,000 | 600 |
| 15 | 2.2 | Meeting 2 | manual | 1d | 2022-10-14 08:00 A | 2022-10-14 17:00 A | 14 | 100% |  |  |  |  | start no earlier than 2022-10-14 08:00 |  | Bin Hui; Debra; Dominic; Jasmine; Theophilus; Tsun Hong | 48h | 48h | 1,200 |  | 1,200 |
| 16 | 2.3 | Fill up Meeting Agenda for Meeting 2 | milestone | 0d | 2022-10-14 08:00 A | 2022-10-14 08:00 A | 15SS | 100% |  |  |  |  | start no earlier than 2022-10-14 08:00 |  | Dominic |  |  |  |  |  |
| 17 | 2.4 | Prepare MS Projects timeline |  | 1d | 2022-10-15 10:00 A | 2022-10-16 12:00 A | 15 | 100% |  | 2022-10-14 08:00 | 2022-10-14 17:00 | 1d |  |  | Tsun Hong [25%] | 2h | 2h | 50 | 6,000 | 50 |
| 18 | 2.5 | Prepare Cost Management Plan |  | 1d | 2022-10-15 10:00 A | 2022-10-16 12:00 A | 15 | 100% |  | 2022-10-14 08:00 | 2022-10-14 17:00 | 1d |  |  | Tsun Hong [25%] | 2h | 2h | 50 |  | 50 |
| 19 | 2.6 | Fill up Project Milestone Report | manual | 0.5d | 2022-10-17 08:00 A | 2022-10-17 12:00 A | 15 | 100% |  |  |  |  | start no earlier than 2022-10-17 08:00 |  | Jasmine | 4h | 4h | 100 |  | 100 |
| 20 | 2.7 | Gather requirements and fill up Requirements Traceability Matrix |  | 1d | 2022-10-17 08:00 A | 2022-10-17 17:00 A | 15 | 100% |  | 2022-10-13 17:00 | 2022-10-14 17:00 | 1d | finish no earlier than 2022-10-17 17:00 |  | Theophilus | 8h | 8h | 200 | 7,000 | 200 |
| 21 | 2.8 | Prepare Risk Management Plan |  | 0.5d | 2022-10-17 13:00 A | 2022-10-17 17:00 A | 15 | 100% |  | 2022-10-14 08:00 | 2022-10-14 17:00 | 1d | finish no earlier than 2022-10-17 17:00 |  | Dominic | 4h | 4h | 100 |  | 100 |
| 22 | 2.9 | Analysis completed | milestone | 0d | 2022-10-17 08:00 A | 2022-10-17 08:00 A | 16FS-1d, 17FS-1d, 18FS-1d, 21FS-1d, 19FS-1d, 20FS-1d | 100% |  | 2022-10-17 08:00 | 2022-10-17 17:00 | 1d |  | 2022-10-20 17:00 | Bin Hui; Debra; Dominic; Jasmine; Theophilus; Tsun Hong |  |  |  |  |  |
| 23 | 3 | **Design Stage** |  | 2d | 2022-10-19 08:00 A | 2022-10-20 17:00 A |  | 100% |  | 2022-10-18 08:00 | 2022-10-19 17:00 | 2d |  | 2022-10-21 17:00 |  | 96h | 96h | 2,400 |  | 2,400 |
| 24 | 3.1 | Design backend (Pseudocode and flowchart) |  | 1d | 2022-10-19 08:00 A | 2022-10-19 17:00 A | 22 | 100% |  | 2022-10-18 08:00 | 2022-10-18 17:00 | 1d | start no earlier than 2022-10-19 08:00 |  | Bin Hui; Debra; Dominic; Jasmine; Theophilus; Tsun Hong | 48h | 48h | 1,200 |  | 1,200 |
| 25 | 3.2 | Design frontend (Wireframing) |  | 1d | 2022-10-20 08:00 A | 2022-10-20 17:00 A | 24 | 100% |  | 2022-10-18 08:00 | 2022-10-18 17:00 | 1d |  |  | Bin Hui; Debra; Dominic; Jasmine; Theophilus; Tsun Hong | 48h | 48h | 1,200 |  | 1,200 |
| 26 | 3.3 | Design completed | milestone | 0d | 2022-10-20 08:00 A | 2022-10-20 08:00 A | 25FS-1d, 24FS-1d | 100% |  | 2022-10-19 08:00 | 2022-10-19 17:00 | 1d |  | 2022-10-21 17:00 | Bin Hui; Debra; Dominic; Jasmine; Theophilus; Tsun Hong |  |  |  |  |  |

| ID | WBS | Task | Type | Duration | Start | Finish | Predecessors | Complete | Actual finish | Baseline start | Baseline finish | Baseline duration | Constraint | Deadline | Resources | Work | Actual work | Cost | Baseline cost | Actual cost |
| --- | --- | --- | --- | --- | --- | --- | --- | --- | --- | --- | --- | --- | --- | --- | --- | --- | --- | --- | --- | --- |
| 27 | 4 | **Development Stage** |  | 15d | 2022-10-21 08:00 A | 2022-11-08 17:00 A |  | 100% |  | 2022-10-20 08:00 | 2022-11-03 17:00 | 10d |  | 2022-11-10 17:00 |  | 163.2h | 163.2h | 4,080 | 1,000 | 4,080 |
| 28 | 4.1 | Fill up Project Milestone Report | manual | 0.5d | 2022-10-21 08:00 A | 2022-10-21 12:00 A | 26 | 100% |  |  |  |  | start no earlier than 2022-10-21 08:00 |  | Jasmine | 4h | 4h | 100 |  | 100 |
| 29 | 4.2 | Program Backend |  | 12d | 2022-10-22 10:00 A | 2022-11-07 17:00 A | 26 | 100% |  |  |  |  | start no earlier than 2022-10-22 08:00 |  | Bin Hui [40%]; Jasmine [40%] | 76.8h | 76.8h | 1,920 |  | 1,920 |
| 30 | 4.3 | Program Frontend |  | 12d | 2022-10-22 10:00 A | 2022-11-07 17:00 A | 29SS | 100% |  |  |  |  | finish no earlier than 2022-11-07 17:00 |  | Bin Hui [40%]; Jasmine [40%] | 76.8h | 76.8h | 1,920 |  | 1,920 |
| 31 | 4.4 | Fill up Project Milestone Report | manual | 0.5d | 2022-11-04 08:00 A | 2022-11-04 12:00 A | 46 | 100% |  |  |  |  | start no earlier than 2022-11-04 08:00 |  | Debra; Jasmine [40%] | 5.6h | 5.6h | 140 |  | 140 |
| 32 | 4.5 | Program completed | milestone | 0d | 2022-11-08 17:00 A | 2022-11-08 17:00 A | 46FS-1d | 100% |  |  |  |  | finish no earlier than 2022-11-08 17:00 | 2022-11-10 17:00 | Bin Hui; Debra; Dominic; Jasmine; Theophilus; Tsun Hong |  |  |  |  |  |
| 33 | 5 | **Change Request** |  | 6d | 2022-10-25 08:00 A | 2022-10-31 17:00 |  | 100% | 2022-10-31 08:00 |  |  |  |  | 2022-11-01 17:00 |  | 97.6h | 97.6h | 2,440 |  | 2,440 |
| 34 | 5.1 | Change Request received | milestone | 0d | 2022-10-25 08:00 A | 2022-10-25 08:00 A |  | 100% |  |  |  |  |  |  | Bin Hui; Debra; Dominic; Jasmine; Theophilus; Tsun Hong |  |  |  |  |  |
| 35 | 5.2 | Meeting 3 |  | 1d | 2022-10-25 08:00 A | 2022-10-25 17:00 A | 34 | 100% |  |  |  |  |  |  | Bin Hui [10%]; Debra; Dominic [50%]; Jasmine [10%]; Theophilus [50%]; Tsun Hong | 16h | 16h | 400 |  | 400 |
| 36 | 5.3 | Fill up Meeting Agenda for Meeting 3 | milestone | 0d | 2022-10-25 08:00 A | 2022-10-25 08:00 A | 35SS | 100% |  |  |  |  |  |  | Dominic |  |  |  |  |  |
| 37 | 5.4 | Complete Change Request Form | milestone | 0d | 2022-10-25 08:00 A | 2022-10-25 08:00 A | 35SS | 100% |  |  |  |  |  |  | Bin Hui; Debra; Dominic; Jasmine; Theophilus; Tsun Hong |  |  |  |  |  |
| 38 | 5.5 | Submit Change Request Form to CIO |  | 1d | 2022-10-25 08:00 A | 2022-10-25 17:00 A | 37 | 100% |  |  |  |  |  |  | Theophilus | 8h | 8h | 200 |  | 200 |
| 39 | 5.6 | Update Requirements Traceability Matrix |  | 2d | 2022-10-26 08:00 A | 2022-10-27 17:00 A | 38 | 100% |  |  |  |  |  |  | Theophilus | 16h | 16h | 400 |  | 400 |
| 40 | 5.7 | Update HR Plan |  | 0.5d | 2022-10-26 08:00 A | 2022-10-26 12:00 A | 38 | 100% |  |  |  |  |  |  | Debra | 4h | 4h | 100 |  | 100 |
| 41 | 5.8 | Update Scope Statement |  | 1d | 2022-10-27 08:00 A | 2022-10-27 17:00 A | 38 | 100% |  |  |  |  | start no earlier than 2022-10-27 08:00 |  | Debra | 8h | 8h | 200 |  | 200 |
| 42 | 5.9 | Update Cost Baseline to include change request |  | 2d | 2022-10-26 08:00 A | 2022-10-27 17:00 A | 38 | 100% |  |  |  |  |  |  | Tsun Hong | 16h | 16h | 400 |  | 400 |
| 43 | 5.10 | Update Project Schedule |  | 0.5d | 2022-10-26 08:00 A | 2022-10-26 12:00 A | 38 | 100% |  |  |  |  |  |  | Bin Hui | 4h | 4h | 100 |  | 100 |
| 44 | 5.11 | Fill up and update Project Milestone Report | manual | 1d | 2022-10-28 08:00 A | 2022-10-28 17:00 A | 38 | 100% |  |  |  |  | start no earlier than 2022-10-28 08:00 |  | Jasmine [20%]; Debra | 9.6h | 9.6h | 240 |  | 240 |
| 45 | 5.12 | Update Risk Register to include change request |  | 2d | 2022-10-28 08:00 A | 2022-10-30 15:00 A | 38 | 100% |  |  |  |  | start no earlier than 2022-10-28 08:00 |  | Dominic | 16h | 16h | 400 |  | 400 |
| 46 | 5.13 | Change Request updates completed | milestone | 0d | 2022-10-31 08:00 A | 2022-10-31 08:00 A | 39FS-1d, 42FS-1d, 43FS-1d, 45FS-1d | 100% |  |  |  |  | start no earlier than 2022-10-28 08:00 | 2022-11-01 17:00 | Bin Hui; Debra; Dominic; Jasmine; Theophilus; Tsun Hong |  |  |  |  |  |
| 47 | 6 | **Testing Stage** |  | 2d | 2022-11-09 08:00 A | 2022-11-10 17:00 A |  | 100% |  | 2022-11-04 08:00 | 2022-11-11 17:00 | 6d |  | 2022-11-10 17:00 |  | 23.6h | 23.6h | 590 |  | 590 |
| 48 | 6.1 | Discuss Testing plans |  | 1d | 2022-11-09 08:00 A | 2022-11-09 17:00 A | 32 | 100% |  |  |  |  |  |  | Bin Hui [50%]; Jasmine [50%] | 8h | 8h | 200 |  | 200 |
| 49 | 6.2 | Write up Test Cases |  | 1d | 2022-11-09 08:00 A | 2022-11-09 17:00 A | 48SS | 100% |  |  |  |  |  |  | Bin Hui [50%]; Jasmine [50%] | 8h | 8h | 200 |  | 200 |
| 50 | 6.3 | Run Test cases |  | 0.5d | 2022-11-10 13:00 A | 2022-11-10 17:00 A | 49 | 100% |  | 2022-11-07 08:00 | 2022-11-08 17:00 | 2d | finish no earlier than 2022-11-10 17:00 |  | Bin Hui [50%]; Jasmine [50%] | 4h | 4h | 100 |  | 100 |
| 51 | 6.4 | Fill in Test report |  | 0.5d | 2022-11-10 13:00 A | 2022-11-10 17:00 A | 50SS | 100% |  |  |  |  | start no earlier than 2022-11-10 08:00 |  | Bin Hui [50%]; Jasmine [50%] | 3.6h | 3.6h | 90 |  | 90 |
| 52 | 6.5 | Testing completed | milestone | 0d | 2022-11-10 08:00 A | 2022-11-10 08:00 A | 50FS-1d | 100% |  | 2022-11-11 08:00 | 2022-11-11 17:00 | 1d | start no earlier than 2022-11-10 08:00 | 2022-11-10 17:00 | Bin Hui; Debra; Dominic; Jasmine; Theophilus; Tsun Hong |  |  |  |  |  |

| ID | WBS | Task | Type | Duration | Start | Finish | Predecessors | Complete | Actual finish | Baseline start | Baseline finish | Baseline duration | Constraint | Deadline | Resources | Work | Actual work | Cost | Actual cost |
| --- | --- | --- | --- | --- | --- | --- | --- | --- | --- | --- | --- | --- | --- | --- | --- | --- | --- | --- | --- |
| 53 | 7 | **Preparation Stage** |  | 5.75d | 2022-11-10 08:00 A | 2022-11-16 15:00 |  | 100% | 2022-11-16 12:00 | 2022-11-14 08:00 | 2022-11-16 17:00 | 3d |  | 2022-11-16 17:00 |  | 128h | 128h | 3,200 | 3,200 |
| 54 | 7.1 | Fill up Project Milestone Report | manual | 0.5d | 2022-11-11 08:00 A | 2022-11-11 12:00 A | 52 | 100% |  |  |  |  | start no earlier than 2022-11-11 08:00 |  | Jasmine | 4h | 4h | 100 | 100 |
| 55 | 7.2 | Prepare video |  | 4d | 2022-11-10 08:00 A | 2022-11-14 17:00 A | 52FS-2.5% | 100% |  | 2022-11-14 08:00 | 2022-11-16 17:00 | 3d | finish no earlier than 2022-11-14 17:00 |  | Dominic; Tsun Hong | 48h | 48h | 1,200 | 1,200 |
| 56 | 7.3 | Meeting 4 |  | 1d | 2022-11-15 08:00 A | 2022-11-15 17:00 A | 55 | 100% |  |  |  |  |  |  | Bin Hui; Debra; Dominic; Jasmine; Theophilus; Tsun Hong | 48h | 48h | 1,200 | 1,200 |
| 57 | 7.4 | Fill up Meeting Agenda for Meeting 4 | milestone | 0d | 2022-11-15 08:00 A | 2022-11-15 08:00 A | 56SS | 100% |  |  |  |  |  |  | Dominic |  |  |  |  |
| 58 | 7.5 | Complete Team and personal Lesson Learnt Report | milestone | 0d | 2022-11-15 08:00 A | 2022-11-15 08:00 A | 56SS | 100% |  |  |  |  |  |  | Bin Hui; Debra; Dominic; Jasmine; Theophilus; Tsun Hong |  |  |  |  |
| 59 | 7.6 | Fill up Project Milestone Report | manual | 0.5d | 2022-11-16 08:00 A | 2022-11-16 12:00 A | 58 | 100% |  |  |  |  | start no earlier than 2022-11-16 08:00 |  | Jasmine | 4h | 4h | 100 | 100 |
| 60 | 7.7 | Final look-through |  | 0.5d | 2022-11-16 08:00 A | 2022-11-16 12:00 A | 56FS-2.5% | 100% |  | 2022-11-16 17:00 | 2022-11-16 17:00 | 0d | start no earlier than 2022-11-16 08:00 | 2022-11-16 17:00 | Bin Hui; Debra; Dominic; Jasmine; Theophilus; Tsun Hong | 24h | 24h | 600 | 600 |
| 61 | 7.8 | Submission | milestone | 0d | 2022-11-16 12:00 A | 2022-11-16 12:00 A | 60, 68, 74, 59, 79 | 100% |  |  |  |  | start no earlier than 2022-11-16 08:00 | 2022-11-16 17:00 | Bin Hui; Debra; Dominic; Jasmine; Theophilus; Tsun Hong |  |  |  |  |
| 62 | 8 | **Fill in Progress Report** |  | 27d | 2022-10-16 08:00 A | 2022-11-16 17:00 |  | 100% | 2022-11-16 12:00 |  |  |  |  |  |  | 48h | 48h | 1,200 | 1,200 |
| 63 | 8.1 | Fill in Progress Report 1 |  | 0.5d | 2022-10-16 08:00 A | 2022-10-16 12:00 A | 15 | 100% |  |  |  |  | start no earlier than 2022-10-16 08:00 |  | Debra; Theophilus | 8h | 8h | 200 | 200 |
| 64 | 8.2 | Fill in Progress Report 2 |  | 0.5d | 2022-10-23 10:00 A | 2022-10-23 17:00 A | 63 | 100% |  |  |  |  | finish no earlier than 2022-10-23 17:00 |  | Debra; Theophilus | 8h | 8h | 200 | 200 |
| 65 | 8.3 | Fill in Progress Report 3 |  | 0.5d | 2022-10-30 10:00 A | 2022-10-30 15:00 A | 64 | 100% |  |  |  |  | start no earlier than 2022-10-30 08:00 |  | Debra; Theophilus | 8h | 8h | 200 | 200 |
| 66 | 8.4 | Fill in Progress Report 4 |  | 0.5d | 2022-11-06 10:00 A | 2022-11-06 17:00 A | 65 | 100% |  |  |  |  | finish no earlier than 2022-11-06 17:00 |  | Debra; Theophilus | 8h | 8h | 200 | 200 |
| 67 | 8.5 | Fill in Progress Report 5 |  | 0.5d | 2022-11-13 10:00 A | 2022-11-13 17:00 A | 66 | 100% |  |  |  |  | finish no earlier than 2022-11-13 17:00 |  | Debra; Theophilus | 8h | 8h | 200 | 200 |
| 68 | 8.6 | Fill in Progress Report 6 |  | 0.5d | 2022-11-16 08:00 A | 2022-11-16 12:00 A | 67 | 100% |  |  |  |  | start no earlier than 2022-11-16 08:00 | 2022-11-16 17:00 | Theophilus; Debra | 8h | 8h | 200 | 200 |
| 69 | 9 | **Fill in Risk Register** |  | 25d | 2022-10-11 08:00 A | 2022-11-09 12:00 A |  | 100% |  |  |  |  |  |  |  | 20h | 20h | 500 | 500 |
| 70 | 9.1 | Fill in Risk Register 1 |  | 0.5d | 2022-10-11 08:00 A | 2022-10-11 12:00 A | 2SS | 100% |  |  |  |  | start no earlier than 2022-10-11 08:00 |  | Dominic | 4h | 4h | 100 | 100 |
| 71 | 9.2 | Fill in Risk Register 2 |  | 0.5d | 2022-10-17 08:00 A | 2022-10-17 12:00 A | 70 | 100% |  |  |  |  | start no earlier than 2022-10-17 08:00 |  | Dominic | 4h | 4h | 100 | 100 |
| 72 | 9.3 | Fill in Risk Register 3 |  | 0.5d | 2022-10-25 08:00 A | 2022-10-25 12:00 A | 71 | 100% |  |  |  |  | start no earlier than 2022-10-25 08:00 |  | Dominic | 4h | 4h | 100 | 100 |
| 73 | 9.4 | Fill in Risk Register 4 |  | 0.5d | 2022-10-31 08:00 A | 2022-10-31 12:00 A | 72 | 100% |  |  |  |  | start no earlier than 2022-10-31 08:00 |  | Dominic | 4h | 4h | 100 | 100 |
| 74 | 9.5 | Fill in Risk Register 5 |  | 0.5d | 2022-11-09 08:00 A | 2022-11-09 12:00 A | 73 | 100% |  |  |  |  | start no earlier than 2022-11-09 08:00 | 2022-11-16 17:00 | Dominic | 4h | 4h | 100 | 100 |
| 75 | 10 | **Update Cost Baseline** |  | 24d | 2022-10-15 10:00 A | 2022-11-12 15:00 A |  | 100% |  |  |  |  |  |  |  | 22h | 22h | 550 | 550 |
| 76 | 10.1 | Update Cost Baseline |  | 0.5d | 2022-10-15 10:00 A | 2022-10-15 15:00 A | 6 | 100% |  |  |  |  | start no earlier than 2022-10-15 08:00 |  | Tsun Hong [50%]; Dominic | 6h | 6h | 150 | 150 |
| 77 | 10.2 | Update Cost Baseline |  | 0.5d | 2022-10-22 10:00 A | 2022-10-22 15:00 A | 76 | 100% |  |  |  |  | start no earlier than 2022-10-22 08:00 |  | Tsun Hong | 4h | 4h | 100 | 100 |
| 78 | 10.3 | Update Cost Baseline |  | 0.5d | 2022-10-29 10:00 A | 2022-10-29 15:00 A | 77 | 100% |  |  |  |  | start no earlier than 2022-10-29 08:00 |  | Tsun Hong | 4h | 4h | 100 | 100 |
| 79 | 10.4 | Update Cost Baseline |  | 0.5d | 2022-11-05 10:00 A | 2022-11-05 15:00 A | 78 | 100% |  |  |  |  | start no earlier than 2022-11-05 08:00 |  | Tsun Hong | 4h | 4h | 100 | 100 |
| 80 | 10.5 | Update Cost Baseline |  | 0.5d | 2022-11-12 10:00 A | 2022-11-12 15:00 A | 79 | 100% |  |  |  |  | start no earlier than 2022-11-12 08:00 | 2022-11-16 17:00 | Tsun Hong | 4h | 4h | 100 | 100 |
